# Project_YourEyes1.1

Schedule from MS Project, 2017-03-02 to 2017-06-09, A marks actual dates.

## Calendars

- 标准: Mon-Fri 08:00-12:00, 13:00-17:00; Sat-Sun off.

## Resources

| Resource |
| --- |
| 刘佳艺 |
| 薛明峰 |

## Schedule

| ID | WBS | Task | Type | Duration | Start | Finish | Predecessors | Complete | Remaining | Actual start | Actual finish | Total slack | Resources | Work | Actual work |
| --- | --- | --- | --- | --- | --- | --- | --- | --- | --- | --- | --- | --- | --- | --- | --- |
| 1 | 1 | **项目立项** |  | 4d | 2017-03-02 A | 2017-03-07 A |  | 100% |  |  |  |  |  | 123h | 123h |
| 2 | 1.1 | 文献调查 | milestone, manual | 0d | 2017-03-02 A | 2017-03-02 A |  | 100% |  |  |  |  | 刘佳艺 |  |  |
| 3 | 1.2 | 社会调查 | manual | 2d | 2017-03-03 A | 2017-03-05 A |  | 100% |  |  |  |  | 薛明峰 | 57h | 57h |
| 4 | 1.3 | 可行性分析 | manual | 2d | 2017-03-06 A | 2017-03-07 A | 2, 3 | 100% |  |  |  |  | 刘佳艺; 薛明峰 | 66h | 66h |
| 5 | 1.4 | <立项完成> | milestone, manual | 0d | 2017-03-07 A | 2017-03-07 A |  | 100% |  |  |  |  |  |  |  |
| 6 | 2 | **整体规划** |  | 8d | 2017-03-08 A | 2017-03-17 A | 1 | 100% |  |  |  |  |  | 282h | 282h |
| 7 | 2.1 | 总体设计 | manual | 6d | 2017-03-08 A | 2017-03-15 A |  | 100% |  |  |  |  | 刘佳艺 [50%]; 薛明峰 [50%] | 177h | 177h |
| 8 | 2.2 | 确定人员分工 | manual | 6d | 2017-03-10 A | 2017-03-17 A |  | 100% |  |  |  |  | 刘佳艺 [50%] | 88.5h | 88.5h |
| 9 | 2.3 | 制定管理计划 | manual | 2d | 2017-03-16 A | 2017-03-17 A |  | 100% |  |  |  |  | 刘佳艺 [50%] | 16.5h | 16.5h |
| 10 | 3 | **需求分析** |  | 6d | 2017-03-18 A | 2017-03-27 A | 6 | 100% |  |  |  |  |  | 157.5h | 157.5h |
| 11 | 3.1 | 需求分析 | manual | 4d | 2017-03-18 A | 2017-03-22 A |  | 100% |  |  |  |  | 刘佳艺 | 105h | 105h |
| 12 | 3.2 | 可行性分析 | manual | 3d | 2017-03-23 A | 2017-03-27 A | 11 | 100% |  |  |  |  | 薛明峰 [50%] | 52.5h | 52.5h |
| 13 | 3.3 | <需求分析完成> | milestone, manual | 0d | 2017-03-27 A | 2017-03-27 A |  | 100% |  |  |  |  |  |  |  |
| 14 | 4 | **技术可行性分析** |  | 1d | 2017-03-28 | 2017-03-28 | 11 | 100% |  | 2017-03-23 | 2017-04-05 |  |  | 99.9h | 99.9h |
| 15 | 4.1 | 相关资料查询 | manual | 4d | 2017-03-23 A | 2017-03-28 A |  | 100% |  |  |  |  | 刘佳艺 [30%]; 薛明峰 [20%] | 64.5h | 64.5h |
| 16 | 4.2 | 技术可行性分析 | manual | 6d | 2017-03-29 A | 2017-04-05 A | 15 | 100% |  |  |  |  | 薛明峰 [20%] | 35.4h | 35.4h |
| 17 | 5 | UI设计 | manual | 2d | 2017-03-23 A | 2017-03-24 | 11 | 40% | 1.2d |  |  |  | 刘佳艺 [50%] | 16.5h | 3.7h |
| 18 | 6 | **开发环境搭建** |  | 1d | 2017-03-27 A | 2017-03-27 A |  | 100% |  |  |  |  |  | 12.6h | 12.6h |
| 19 | 6.1 | 安装开发工具 | manual | 1d | 2017-03-27 A | 2017-03-27 A |  | 100% |  |  |  |  | 刘佳艺 [20%]; 薛明峰 [50%] | 6.3h | 6.3h |
| 20 | 6.2 | 配置开发环境 | manual | 1d | 2017-03-27 A | 2017-03-27 A | 19FF | 100% |  |  |  |  | 刘佳艺 [20%]; 薛明峰 [50%] | 6.3h | 6.3h |
| 21 | 7 | **盲人端实现** |  | 21d | 2017-03-28 A | 2017-04-25 | 18 | 20% | 16.8d |  |  | 0d |  | 383.1h | 79.12h |
| 22 | 7.1 | UI实现 | manual | 21d | 2017-03-28 A | 2017-04-25 |  | 31% | 14.4d |  |  |  | 薛明峰 [30%] | 204.3h | 59.34h |
| 23 | 7.2 | 交互功能 | manual | 21d | 2017-03-28 A | 2017-04-25 | 22FF | 31% | 14.4d |  |  |  | 薛明峰 [10%] | 68.1h | 19.78h |
| 24 | 7.3 | 导航功能 | manual | 12d | 2017-04-10 | 2017-04-25 | 22FF |  |  |  |  |  | 薛明峰 [10%] | 36.9h |  |
| 25 | 7.4 | 语音提示及交互优化 | manual | 12d | 2017-04-10 | 2017-04-25 | 22FF |  |  |  |  |  | 薛明峰 [20%] | 73.8h |  |

| ID | WBS | Task | Type | Duration | Start | Finish | Predecessors | Complete | Remaining | Total slack | Resources | Work | Actual work |
| --- | --- | --- | --- | --- | --- | --- | --- | --- | --- | --- | --- | --- | --- |
| 26 | 8 | **服务器端实现** |  | 15d | 2017-04-05 | 2017-04-25 | 18 |  |  | 0d |  | 195.6h |  |
| 27 | 8.1 | 数据库创建与使用 | manual | 15d | 2017-04-05 | 2017-04-25 |  |  |  |  | 刘佳艺 [10%] | 48.9h |  |
| 28 | 8.2 | 与客户端交互 | manual | 15d | 2017-04-05 | 2017-04-25 | 27FF |  |  |  | 刘佳艺 [30%] | 146.7h |  |
| 29 | 9 | 红绿灯识别算法 | manual | 22d | 2017-04-01 A | 2017-04-30 |  | 60% | 8.8d |  | 刘佳艺 [30%] | 211.5h | 130.08h |
| 30 | 10 | <代码实现> | milestone, manual | 0d | 2017-04-30 | 2017-04-30 |  |  |  |  |  |  |  |
| 31 | 11 | **模块集成** |  | 11d | 2017-05-01 | 2017-05-15 | 21, 26 |  |  | 0d |  | 690h |  |
| 32 | 11.1 | 功能模块集成 | manual | 11d | 2017-05-01 | 2017-05-15 |  |  |  |  | 刘佳艺; 薛明峰 | 690h |  |
| 33 | 12 | **项目测试** |  | 25d | 2017-04-16 | 2017-05-19 |  |  |  | 0d |  | 177.9h |  |
| 34 | 12.1 | 制定计划 | manual | 8d | 2017-04-16 | 2017-04-25 | 14 |  |  |  | 刘佳艺 [10%]; 薛明峰 [10%] | 45h |  |
| 35 | 12.2 | 单元测试 | manual | 1d | 2017-05-16 | 2017-05-16 |  |  |  |  | 刘佳艺 [10%] | 0.9h |  |
| 36 | 12.3 | 集成测试 | manual | 2d | 2017-05-16 | 2017-05-17 | 31 |  |  |  | 刘佳艺; 薛明峰 | 66h |  |
| 37 | 12.4 | 系统测试 | manual | 2d | 2017-05-18 | 2017-05-19 | 36 |  |  |  | 刘佳艺 [50%]; 薛明峰 [50%] | 33h |  |
| 38 | 12.5 | 验收测试 | manual | 2d | 2017-05-18 | 2017-05-19 | 36, 37FF |  |  |  | 刘佳艺 [50%]; 薛明峰 [50%] | 33h |  |
| 39 | 12.6 | <测试完成> | milestone, manual | 0d | 2017-05-19 | 2017-05-19 |  |  |  |  |  |  |  |
| 40 | 13 | **功能完善** |  | 9d | 2017-05-20 | 2017-06-01 | 33 |  |  | 0d |  | 564h |  |
| 41 | 13.1 | 产品优化 | manual | 7d | 2017-05-20 | 2017-05-28 |  |  |  |  | 薛明峰; 刘佳艺 | 402h |  |
| 42 | 13.2 | 项目打包、上传 | manual | 4d | 2017-05-29 | 2017-06-01 | 41 |  |  |  | 刘佳艺; 薛明峰 | 162h |  |
| 43 | 14 | 项目总结 | manual | 6d | 2017-06-02 | 2017-06-09 | 42 |  |  |  | 刘佳艺; 薛明峰 | 354h |  |
| 44 | 15 | <课题项目结束> | milestone, manual | 0d | 2017-06-09 | 2017-06-09 |  |  |  |  |  |  |  |
